# Concesión La Huaca - Piura

Schedule from MS Project, 2024-10-01 to 2026-11-25.

## Calendars

- Días Calendario: Mon-Sun 09:00-17:00.

## Schedule

| ID | WBS | Task | Type | Duration | Start | Finish | Predecessors | Total slack | Free slack | Constraint | Responsable |
| --- | --- | --- | --- | --- | --- | --- | --- | --- | --- | --- | --- |
| 1 | 1 | **Zona de Concesión Piura (Subestación VdCh - Alimentador)** |  | 786d | 2024-10-01 | 2026-11-25 |  | 0d |  |  |  |
| 2 | 1.1 | INICIO | milestone | 0d | 2024-10-01 | 2024-10-01 |  | 603d | 0d |  |  |
| 3 | 1.2 | **PUNTO DE CONEXIÓN** |  | 483d | 2025-02-18 | 2026-06-15 |  | 163d |  |  | Bruno García |
| 4 | 1.2.1 | Respuesta Aprobatoria a la Solicitud de Conexión |  | 50d | 2025-02-18 | 2025-04-08 |  | 448d | 0d | start no earlier than 2025-02-18 |  |
| 5 | 1.2.2 | Aprobación de Expediente Técnico |  | 148d | 2025-04-09 | 2025-09-03 | 4 | 448d |  |  |  |
| 6 | 1.2.3 | Recepción de Convenio de Celeo |  | 1d | 2025-08-08 | 2025-08-08 |  | 163d | 0d | start no earlier than 2025-08-08 |  |
| 7 | 1.2.4 | Evaluación y Firma del Convenio con Celeo |  | 311d | 2025-08-09 | 2026-06-15 | 6 | 163d |  | start no earlier than 2025-06-19 |  |
| 8 | 1.3 | **TRAZO DE LÍNEA PRELIMINAR** |  | 70d | 2025-04-24 | 2025-07-02 |  | 511d |  |  | Santiago León |
| 9 | 1.3.1 | Comprobación de Terreno |  | 3d | 2025-04-24 | 2025-04-26 | 4FS+15d | 511d | 0d |  |  |
| 10 | 1.3.2 | Cálculos de Gabinete |  | 7d | 2025-04-27 | 2025-05-03 | 9 | 511d | 0d |  |  |
| 11 | 1.3.3 | Diseño Especificaciones |  | 15d | 2025-05-04 | 2025-05-18 | 10 | 511d | 0d |  |  |
| 12 | 1.3.4 | Planos de Distribución y Metrados |  | 15d | 2025-05-19 | 2025-06-02 | 11 | 511d | 0d |  |  |
| 13 | 1.3.5 | Desarrollo Memorias y Expedientes |  | 30d | 2025-06-03 | 2025-07-02 | 12 | 511d |  |  |  |
| 14 | 1.4 | **PERMISOLOGÍA** |  | 775d | 2024-10-01 | 2026-11-14 |  | 11d |  |  |  |
| 15 | 1.4.1 | **Estudio Ambiental (MDIA)** |  | 232d | 2024-10-01 | 2025-05-20 |  | 554d |  |  | Daniel Quiroz |
| 16 | 1.4.1.1 | TdR Servicio de MDIA Piura |  | 9d | 2024-10-01 | 2024-10-09 | 2 | 645d | 0d |  |  |
| 17 | 1.4.1.2 | Solped y OC |  | 2d | 2024-10-10 | 2024-10-11 | 16 | 645d | 0d |  |  |
| 18 | 1.4.1.3 | Licitación (Para modificación del DIA) |  | 5d | 2024-10-14 | 2024-10-18 | 17FS+2d | 645d | 0d |  |  |
| 19 | 1.4.1.4 | Contratación del Proveedor |  | 2d | 2024-10-19 | 2024-10-20 | 18 | 645d | 0d |  |  |
| 20 | 1.4.1.5 | Presentación de Propuesta de Plan de Trabajo y Revisión de Información Preliminar |  | 30d | 2024-10-21 | 2024-11-19 | 19 | 645d | 0d |  |  |
| 21 | 1.4.1.6 | Respuesta a Solicitud de Requerimiento de Información |  | 42d | 2024-11-20 | 2024-12-31 | 20 | 645d | 0d |  |  |
| 22 | 1.4.1.7 | **Monitoreo Ambiental** |  | 57d | 2024-11-23 | 2025-01-18 |  | 676d |  |  |  |
| 23 | 1.4.1.7.1 | TdR Requerimiento Monitoreo Ambiental |  | 1d | 2024-11-23 | 2024-11-23 | 20FS+3d | 676d | 0d |  |  |
| 24 | 1.4.1.7.2 | Solped y OC |  | 2d | 2024-12-09 | 2024-12-10 | 23FS+15d | 676d | 0d |  |  |
| 25 | 1.4.1.7.3 | Licitación |  | 1d | 2024-12-11 | 2024-12-11 | 24 | 676d | 0d |  |  |
| 26 | 1.4.1.7.4 | Contratación del Proveedor |  | 1d | 2024-12-14 | 2024-12-14 | 25FS+2d | 676d | 0d |  |  |
| 27 | 1.4.1.7.5 | Ejecución del Monitoreo y Resultados |  | 6d | 2025-01-13 | 2025-01-18 | 26FS+29d | 676d |  |  |  |
| 28 | 1.4.1.8 | Elaboración del Estudio |  | 49d | 2025-01-01 | 2025-02-18 | 21 | 645d | 0d |  |  |
| 29 | 1.4.1.9 | Carta Solicitud de Exposición GORE Piura |  | 1d | 2025-02-13 | 2025-02-13 | 28FS-6d | 646d | 0d |  |  |
| 30 | 1.4.1.10 | Exposición GORE Piura |  | 1d | 2025-02-17 | 2025-02-17 | 29FS+3d | 646d |  |  |  |
| 31 | 1.4.1.11 | Ingreso del Expediente de la MDIA |  | 1d | 2025-03-19 | 2025-03-19 |  | 554d | 0d | start no earlier than 2025-03-19 |  |
| 32 | 1.4.1.12 | Evaluación y Aprobación del Estudio y Resolución (DREM) |  | 62d | 2025-03-20 | 2025-05-20 | 31 | 554d |  |  |  |

Notes:
- 7: Se necesita la firma del Convenio para empezar las obras en subestación

| ID | WBS | Task | Duration | Start | Finish | Predecessors | Total slack | Free slack | Constraint | Responsable |
| --- | --- | --- | --- | --- | --- | --- | --- | --- | --- | --- |
| 33 | 1.4.2 | **Permisos Municipales** | 150d | 2024-10-01 | 2025-02-27 |  | 636d |  |  | Lizet Vite |
| 34 | 1.4.2.1 | **Municipalidad de Sullana** | 150d | 2024-10-01 | 2025-02-27 |  | 636d |  |  |  |
| 35 | 1.4.2.1.1 | Certificado de Zonificación y Vías | 150d | 2024-10-01 | 2025-02-27 |  | 636d |  |  |  |
| 36 | 1.4.2.1.2 | Habilitaciones Urbanas y Secciones Viales | 98d | 2024-10-01 | 2025-01-06 |  | 688d |  |  |  |
| 37 | 1.4.2.2 | **Municipalidad de Paita** | 150d | 2024-10-01 | 2025-02-27 |  | 636d |  |  |  |
| 38 | 1.4.2.2.1 | Certificado de Zonificación y Vías | 150d | 2024-10-01 | 2025-02-27 |  | 636d |  |  |  |
| 39 | 1.4.2.2.2 | Habilitaciones Urbanas y Secciones Viales | 98d | 2024-10-01 | 2025-01-06 |  | 688d |  |  |  |
| 40 | 1.4.2.3 | **Municipalidad de Miguel Checa** | 98d | 2024-10-01 | 2025-01-06 |  | 688d |  |  |  |
| 41 | 1.4.2.3.1 | Habilitaciones Urbanas y Secciones Viales | 98d | 2024-10-01 | 2025-01-06 |  | 688d |  |  |  |
| 42 | 1.4.2.4 | **Municipalidad de La Huaca** | 60d | 2024-10-01 | 2024-11-29 |  | 726d |  |  |  |
| 43 | 1.4.2.4.1 | Habilitaciones Urbanas y Secciones Viales | 60d | 2024-10-01 | 2024-11-29 |  | 726d |  |  |  |
| 44 | 1.4.3 | **CIRA** | 107d | 2025-10-20 | 2026-02-03 |  | 265d |  |  | Lizet Vite |
| 45 | 1.4.3.1 | Licitación | 42d | 2025-10-20 | 2025-11-30 |  | 265d | 0d | start no earlier than 2025-10-20 |  |
| 46 | 1.4.3.2 | Contratación de Proveedor | 1d | 2025-12-01 | 2025-12-01 | 45 | 265d | 0d | start no earlier than 2025-12-01 |  |
| 47 | 1.4.3.3 | Elaboración de Expediente (Visita y Elaboración) | 4d | 2025-12-02 | 2025-12-05 | 46 | 265d | 0d |  |  |
| 48 | 1.4.3.4 | Evaluación y Aprobación (SAP 20 días hab) | 60d | 2025-12-06 | 2026-02-03 | 47 | 265d | 161d |  |  |
| 49 | 1.4.4 | **PMAR** | 139d | 2026-06-29 | 2026-11-14 |  | 11d |  |  | Lizet Vite |
| 50 | 1.4.4.1 | Licitación | 15d | 2026-06-29 | 2026-07-13 | 122SS-43d | 104d | 0d |  |  |
| 51 | 1.4.4.2 | Contratación de Proveedor | 1d | 2026-07-14 | 2026-07-14 | 50 | 104d | 0d |  |  |
| 52 | 1.4.4.3 | Elaboración de Expediente | 15d | 2026-07-15 | 2026-07-29 | 48, 51 | 104d | 0d |  |  |
| 53 | 1.4.4.4 | Aprobación de PMAR | 15d | 2026-07-30 | 2026-08-13 | 52 | 104d |  |  |  |
| 54 | 1.4.4.5 | Ejecución de PMAR | 96d | 2026-08-11 | 2026-11-14 | 122SS | 11d |  |  |  |
| 55 | 1.4.5 | **Terreno y Servidumbre de Paso** | 192d | 2025-10-15 | 2026-04-24 |  | 215d |  |  | Lizet Vite |
| 56 | 1.4.5.1 | Estudio de Títulos | 15d | 2025-10-15 | 2025-10-29 |  | 222d | 7d | start no earlier than 2025-10-15 |  |
| 57 | 1.4.5.2 | Búsqueda Catastral | 15d | 2025-10-15 | 2025-10-29 |  | 222d | 7d | start no earlier than 2025-10-15 |  |

Notes:
- 49: Lo necesitamos aprobado antes de empezar Obras / Notificación a DDC por SAP (20d hab)
- 52: Se elabora con la Resolución del CIRA Aprobado
- 54: Sucede en Paralelo a las excavaciones (Coincidir fechas)

| ID | WBS | Task | Type | Duration | Start | Finish | Predecessors | Total slack | Free slack | Constraint | Responsable |
| --- | --- | --- | --- | --- | --- | --- | --- | --- | --- | --- | --- |
| 58 | 1.4.5.3 | **Servidumbre de Electroducto y Tránsito** |  | 170d | 2025-11-06 | 2026-04-24 |  | 215d |  |  |  |
| 59 | 1.4.5.3.1 | **Solicitud - PECHP** |  | 170d | 2025-11-06 | 2026-04-24 |  | 215d |  |  |  |
| 60 | 1.4.5.3.1.1 | Elaboración de planos perimétricos, ubicación y memoria descriptiva |  | 3d | 2025-11-06 | 2025-11-08 | 56, 57 | 215d | 0d | start no earlier than 2025-11-06 |  |
| 61 | 1.4.5.3.1.2 | Proceso de Evaluación |  | 157d | 2025-11-09 | 2026-04-14 | 60 | 215d | 0d |  |  |
| 62 | 1.4.5.3.1.3 | Levantamiento de Observaciones |  | 5d | 2026-04-15 | 2026-04-19 | 61 | 215d | 0d |  |  |
| 63 | 1.4.5.3.1.4 | Suscripción del Convenio o Resolución |  | 5d | 2026-04-20 | 2026-04-24 | 62 | 215d | 0d |  |  |
| 64 | 1.4.5.4 | Servidumbres Suscritas | milestone | 0d | 2026-04-24 | 2026-04-24 | 63 | 215d |  |  |  |
| 65 | 1.5 | **PROCURA DE MATERIALES CVC** |  | 34d | 2026-07-26 | 2026-08-28 |  | 89d |  |  |  |
| 66 | 1.5.1 | **Materiales Alimentador Aéreo 22.9 kV Sullana** |  | 34d | 2026-07-26 | 2026-08-28 |  | 89d |  |  | Joisy Romero |
| 67 | 1.5.1.1 | **Generación de Solped de Materiales** |  | 5d | 2026-07-26 | 2026-07-30 | 94 | 118d | 0d |  |  |
| 68 | 1.5.1.1.1 | Aprobación |  | 5d | 2026-07-26 | 2026-07-30 |  | 118d |  |  |  |
| 69 | 1.5.1.2 | **Evaluación de Proveedores (Logística)** |  | 9d | 2026-07-26 | 2026-08-03 |  | 89d |  |  |  |
| 70 | 1.5.1.2.1 | TdR |  | 3d | 2026-07-26 | 2026-07-28 | 67SS | 89d | 0d |  |  |
| 71 | 1.5.1.2.2 | TdT |  | 2d | 2026-07-26 | 2026-07-27 | 70SS | 121d |  |  |  |
| 72 | 1.5.1.2.3 | Revisión de crédito y stock |  | 4d | 2026-07-29 | 2026-08-01 | 70 | 89d | 0d |  |  |
| 73 | 1.5.1.2.4 | Selección del Proveedor |  | 2d | 2026-08-02 | 2026-08-03 | 72 | 89d | 0d |  |  |
| 74 | 1.5.1.3 | **Generación de Orden de Compra de Materiales** |  | 5d | 2026-08-04 | 2026-08-08 |  | 89d |  |  |  |
| 75 | 1.5.1.3.1 | Postes y accesorios de concreto |  | 5d | 2026-08-04 | 2026-08-08 | 73 | 89d | 0d |  |  |
| 76 | 1.5.1.3.2 | Conductor AAAC 240mm2 de Doble Terna |  | 5d | 2026-08-04 | 2026-08-08 | 73 | 109d |  |  |  |
| 77 | 1.5.1.3.3 | Conductor AAAC 120 mm2 de Simple Terna |  | 5d | 2026-08-04 | 2026-08-08 | 73 | 109d |  |  |  |
| 78 | 1.5.1.3.4 | Aisladores |  | 5d | 2026-08-04 | 2026-08-08 | 73 | 109d |  |  |  |
| 79 | 1.5.1.3.5 | Órdenes de compra enviadas | milestone | 0d | 2026-08-08 | 2026-08-08 | 75 | 89d | 0d |  |  |
| 80 | 1.5.1.4 | **Fabricación de materiales** |  | 15d | 2026-08-09 | 2026-08-23 |  | 89d |  |  |  |
| 81 | 1.5.1.4.1 | Postes y crucetas |  | 15d | 2026-08-09 | 2026-08-23 | 79 | 89d | 0d |  |  |
| 82 | 1.5.1.4.2 | Conductor de Aluminio (Importación) |  | 15d | 2026-08-09 | 2026-08-23 | 79 | 92d | 0d |  |  |
| 83 | 1.5.1.4.3 | Aisladores |  | 5d | 2026-08-09 | 2026-08-13 | 79 | 102d | 0d |  |  |

Notes:
- 74: No hay premura en empezar con la OC de Materiales sin tener los permisos

| ID | WBS | Task | Type | Duration | Start | Finish | Predecessors | Total slack | Free slack | Constraint | Responsable |
| --- | --- | --- | --- | --- | --- | --- | --- | --- | --- | --- | --- |
| 84 | 1.5.1.5 | **Recepción de materiales** |  | 15d | 2026-08-14 | 2026-08-28 |  | 89d | 0d |  |  |
| 85 | 1.5.1.5.1 | Postes y crucetas |  | 5d | 2026-08-24 | 2026-08-28 | 81 | 89d |  |  |  |
| 86 | 1.5.1.5.2 | Conductor de Aluminio (Importación) |  | 2d | 2026-08-24 | 2026-08-25 | 82 | 92d |  |  |  |
| 87 | 1.5.1.5.3 | Aisladores |  | 2d | 2026-08-14 | 2026-08-15 | 83 | 102d |  |  |  |
| 88 | 1.5.1.6 | Fin de recepción de materiales en almacen | milestone | 0d | 2026-08-28 | 2026-08-28 | 84 | 89d |  |  |  |
| 89 | 1.6 | **PROCURA DEL CONTRATISTA** |  | 164d | 2026-02-12 | 2026-07-25 |  | 123d |  |  |  |
| 90 | 1.6.1 | **Licitación de Transportista (Materiales reutilizados)** |  | 30d | 2026-02-12 | 2026-03-13 |  | 257d |  |  | Joisy Romero |
| 91 | 1.6.1.1 | Licitación |  | 5d | 2026-02-12 | 2026-02-16 |  | 257d | 0d | start no earlier than 2026-02-12 |  |
| 92 | 1.6.1.2 | Contratación del Proveedor |  | 5d | 2026-02-17 | 2026-02-21 | 91 | 257d | 0d |  |  |
| 93 | 1.6.1.3 | Ejecución del servicio |  | 20d | 2026-02-22 | 2026-03-13 | 92 | 257d |  |  |  |
| 94 | 1.6.2 | **Licitación de Contratista de Obras para Montaje Electromecánico** |  | 33d | 2026-06-23 | 2026-07-25 |  | 0d |  |  | Santiago León |
| 95 | 1.6.2.1 | Tdr |  | 4d | 2026-06-23 | 2026-06-26 | 115 | 0d |  |  |  |
| 96 | 1.6.2.2 | Presentación de Propuestas |  | 10d | 2026-06-27 | 2026-07-06 | 95 | 0d |  |  |  |
| 97 | 1.6.2.3 | Levantamiento de Observaciones |  | 4d | 2026-07-07 | 2026-07-10 | 96 | 0d |  |  |  |
| 98 | 1.6.2.4 | Contratación de Proveedor |  | 6d | 2026-07-11 | 2026-07-16 | 97 | 0d |  |  |  |
| 99 | 1.6.2.5 | Generación de Contrato |  | 6d | 2026-07-17 | 2026-07-22 | 98 | 0d |  |  |  |
| 100 | 1.6.2.6 | Firma del Contrato |  | 3d | 2026-07-23 | 2026-07-25 | 99 | 0d |  |  |  |
| 101 | 1.7 | **MONTAJE** |  | 388d | 2025-11-03 | 2026-11-25 |  | 0d |  |  |  |
| 102 | 1.7.1 | **Estudios Previos a Obra** |  | 131d | 2026-01-01 | 2026-05-11 |  | 0d |  |  | Santiago León |
| 103 | 1.7.1.1 | Estudio de resistividad | manual | 35d | 2026-01-01 | 2026-02-04 |  |  |  |  |  |
| 104 | 1.7.1.2 | Estudio de suelos |  | 35d | 2026-03-26 | 2026-04-29 |  | 206d | 0d | start no earlier than 2026-03-26 |  |
| 105 | 1.7.1.3 | Estudio de topografía |  | 47d | 2026-03-26 | 2026-05-11 | 104SS | 206d |  |  |  |
| 106 | 1.7.2 | **Elaboración de Expediente Técnico** |  | 232d | 2025-11-03 | 2026-06-22 |  | 0d |  |  | Santiago León |
| 107 | 1.7.2.1 | Inicio de Expediente Técnico |  | 26d | 2025-11-03 | 2025-11-28 |  | 0d |  | must start on 2025-11-03 |  |
| 108 | 1.7.2.2 | Envío de Expediente técnico |  | 116d | 2025-11-29 | 2026-03-24 | 107 | 0d |  |  |  |
| 109 | 1.7.2.3 | Revisión inicial de expediente técnico (Ingeniería) |  | 6d | 2026-03-25 | 2026-03-30 | 108 | 0d |  |  |  |
| 110 | 1.7.2.4 | 1er Levantamiento de observaciones |  | 17d | 2026-03-31 | 2026-04-16 | 109 | 0d |  |  |  |
| 111 | 1.7.2.5 | Revisión y aprobación (Operaciones) |  | 12d | 2026-04-17 | 2026-04-28 | 110 | 0d |  |  |  |
| 112 | 1.7.2.6 | Informe de paralelismo | manual | 10d | 2026-05-13 | 2026-05-22 | 111FS+14d |  |  |  |  |
| 113 | 1.7.2.7 | 2do Levantamiento de observaciones |  | 27d | 2026-04-29 | 2026-05-25 | 111 | 0d |  |  |  |
| 114 | 1.7.2.8 | Revisión final (Ingeniería & Proy) |  | 28d | 2026-05-26 | 2026-06-22 | 113 | 0d |  |  |  |
| 115 | 1.7.2.9 | Expediente Técnico Aprobado | milestone | 0d | 2026-06-22 | 2026-06-22 | 114 | 0d |  |  |  |

Notes:
- 94: 30 días aproximadamente para la elección del contratista
- 104: 2-3 semanas como máximo entre conseguir el proveedor y ejecutar el servicio
- 105: 1 - 2 semanas, lo hará CVC
- 106: Desde la elaboración hasta la aprobación demora aproximadamente 1 mes / Debería empezar en Enero, de preferencia / Revisar procedimiento 018
- 108: Para esta actividad si es necesario tener listos los estudios de resistividad y de suelos

| ID | WBS | Task | Type | Duration | Start | Finish | Predecessors | Total slack | Free slack | Responsable |
| --- | --- | --- | --- | --- | --- | --- | --- | --- | --- | --- |
| 116 | 1.7.3 | **Alimentador Aéreo 22.9 kV Sullana** |  | 123d | 2026-07-26 | 2026-11-25 |  | 0d |  | Santiago León |
| 117 | 1.7.3.1 | **MONTAJE ELECTROMECÁNICO** |  | 123d | 2026-07-26 | 2026-11-25 |  | 0d |  | Santiago León |
| 118 | 1.7.3.1.1 | **Obras Preliminares** |  | 16d | 2026-07-26 | 2026-08-10 |  | 0d |  |  |
| 119 | 1.7.3.1.1.1 | Movilización |  | 7d | 2026-07-26 | 2026-08-01 | 94 | 0d |  |  |
| 120 | 1.7.3.1.1.2 | Trazo y Replanteo |  | 5d | 2026-08-02 | 2026-08-06 | 119 | 0d |  |  |
| 121 | 1.7.3.1.1.3 | Elaboración y aprobación de ingeniería de detalle | manual | 4d | 2026-08-07 | 2026-08-10 | 120 |  |  |  |
| 122 | 1.7.3.1.2 | Excavaciones |  | 25d | 2026-08-11 | 2026-09-04 | 118 | 0d |  |  |
| 123 | 1.7.3.1.3 | Izaje de postes y cimentación |  | 20d | 2026-08-11 | 2026-08-30 | 122SS | 0d |  |  |
| 124 | 1.7.3.1.4 | Fraguado e instalación de uniones CAC |  | 8d | 2026-08-31 | 2026-09-07 | 123 | 0d |  |  |
| 125 | 1.7.3.1.5 | Instalación de retenidas |  | 15d | 2026-09-08 | 2026-09-22 | 124 | 0d |  |  |
| 126 | 1.7.3.1.6 | Instalación de puesta a tierra |  | 11d | 2026-09-05 | 2026-09-15 | 122 | 63d | 0d |  |
| 127 | 1.7.3.1.7 | Instalación subterránea cable seco 120mm2 |  | 8d | 2026-09-16 | 2026-09-23 | 126 | 63d |  |  |
| 128 | 1.7.3.1.8 | Montaje de armados |  | 11d | 2026-09-24 | 2026-10-04 | 125FS+1d | 0d |  |  |
| 129 | 1.7.3.1.9 | **Tendido de Conductor 185mm2** |  | 24d | 2026-10-06 | 2026-10-29 |  | 0d |  |  |
| 130 | 1.7.3.1.9.1 | Instalación de poleas y pretendido de conductor |  | 9d | 2026-10-06 | 2026-10-14 | 128FS+1d | 0d |  |  |
| 131 | 1.7.3.1.9.2 | Flechado y amarrado a red trifásica conductor AAAC 240mm2 |  | 15d | 2026-10-15 | 2026-10-29 | 130 | 0d |  |  |
| 132 | 1.7.3.1.10 | **Tendido de Conductor 120mm2** |  | 9d | 2026-10-06 | 2026-10-14 |  | 15d |  |  |
| 133 | 1.7.3.1.10.1 | Instalación de poleas y pretendido de conductor |  | 6d | 2026-10-06 | 2026-10-11 | 128FS+1d | 15d | 0d |  |
| 134 | 1.7.3.1.10.2 | Flechado y amarrado a red trifásica conductor AAAC 120mm2 |  | 3d | 2026-10-12 | 2026-10-14 | 133 | 15d |  |  |
| 135 | 1.7.3.1.11 | Rotulado y Señalización |  | 9d | 2026-10-30 | 2026-11-07 | 129, 132 | 0d |  |  |
| 136 | 1.7.3.1.12 | **Expediente conforme a obra** |  | 8d | 2026-11-08 | 2026-11-15 |  | 0d |  |  |
| 137 | 1.7.3.1.12.1 | Elaboración de expediente conforme a obra final |  | 3d | 2026-11-08 | 2026-11-10 | 135 | 0d |  |  |
| 138 | 1.7.3.1.12.2 | Revisión y Aprobación de Expediente |  | 3d | 2026-11-11 | 2026-11-13 | 137 | 0d |  |  |
| 139 | 1.7.3.1.12.3 | Puesta en marcha |  | 2d | 2026-11-14 | 2026-11-15 | 138 | 0d |  |  |

Notes:
- 119: Tarea Variable, tenemos que llegar con todo listo hasta antes de la fecha del flechado / Movilización entre 1 semana y 10 días, se llevará postes, crucetas, etc. / Se esta coordinando que usemos los postes de madera que están en Ica

| ID | WBS | Task | Type | Duration | Start | Finish | Predecessors | Total slack |
| --- | --- | --- | --- | --- | --- | --- | --- | --- |
| 140 | 1.7.3.1.13 | **Pruebas y puesta en operación** |  | 10d | 2026-11-16 | 2026-11-25 |  | 0d |
| 141 | 1.7.3.1.13.1 | Pruebas eléctricas |  | 10d | 2026-11-16 | 2026-11-25 | 136 | 0d |
| 142 | 1.8 | POC | milestone | 0d | 2026-11-25 | 2026-11-25 | 140 | 0d |
