# Concesión La Huaca - Piura

Schedule from MS Project, 2024-10-01 to 2026-10-17.

## Calendars

- Días Calendario: Mon-Sun 09:00-17:00.

## Schedule

| ID | WBS | Task | Type | Duration | Start | Finish | Predecessors | Total slack | Free slack | Constraint | Responsable |
| --- | --- | --- | --- | --- | --- | --- | --- | --- | --- | --- | --- |
| 1 | 1 | **Zona de Concesión Piura (Subestación VdCh - Conexión)** |  | 747d | 2024-10-01 | 2026-10-17 |  | 0d |  |  |  |
| 2 | 1.1 | INICIO | milestone | 0d | 2024-10-01 | 2024-10-01 |  | 603d | 0d |  |  |
| 3 | 1.2 | **PUNTO DE CONEXIÓN** |  | 483d | 2025-02-18 | 2026-06-15 |  | 124d |  |  | Bruno García |
| 4 | 1.2.1 | Respuesta Aprobatoria a la Solicitud de Conexión |  | 50d | 2025-02-18 | 2025-04-08 |  | 422d | 0d | start no earlier than 2025-02-18 |  |
| 5 | 1.2.2 | Aprobación de Expediente Técnico |  | 148d | 2025-04-09 | 2025-09-03 | 4 | 422d |  |  |  |
| 6 | 1.2.3 | Recepción de Convenio de Celeo |  | 1d | 2025-08-08 | 2025-08-08 |  | 137d | 0d | start no earlier than 2025-08-08 |  |
| 7 | 1.2.4 | Evaluación y Firma del Convenio con Celeo |  | 311d | 2025-08-09 | 2026-06-15 | 6 | 137d |  | start no earlier than 2025-06-19 |  |
| 8 | 1.3 | **TRAZO DE LÍNEA PRELIMINAR** |  | 70d | 2025-04-24 | 2025-07-02 |  | 472d |  |  | Santiago León |
| 9 | 1.3.1 | Comprobación de Terreno |  | 3d | 2025-04-24 | 2025-04-26 | 4FS+15d | 485d | 0d |  |  |
| 10 | 1.3.2 | Cálculos de Gabinete |  | 7d | 2025-04-27 | 2025-05-03 | 9 | 485d | 0d |  |  |
| 11 | 1.3.3 | Diseño Especificaciones |  | 15d | 2025-05-04 | 2025-05-18 | 10 | 485d | 0d |  |  |
| 12 | 1.3.4 | Planos de Distribución y Metrados |  | 15d | 2025-05-19 | 2025-06-02 | 11 | 485d | 0d |  |  |
| 13 | 1.3.5 | Desarrollo Memorias y Expedientes |  | 30d | 2025-06-03 | 2025-07-02 | 12 | 485d |  |  |  |
| 14 | 1.4 | **PERMISOLOGÍA** |  | 747d | 2024-10-01 | 2026-10-17 |  | 0d |  |  |  |
| 15 | 1.4.1 | **Estudio Ambiental (MDIA)** |  | 232d | 2024-10-01 | 2025-05-20 |  | 515d |  |  | Daniel Quiroz |
| 16 | 1.4.1.1 | TdR Servicio de MDIA Piura |  | 9d | 2024-10-01 | 2024-10-09 | 2 | 608d | 0d |  |  |
| 17 | 1.4.1.2 | Solped y OC |  | 2d | 2024-10-10 | 2024-10-11 | 16 | 608d | 0d |  |  |
| 18 | 1.4.1.3 | Licitación (Para modificación del DIA) |  | 5d | 2024-10-14 | 2024-10-18 | 17FS+2d | 608d | 0d |  |  |
| 19 | 1.4.1.4 | Contratación del Proveedor |  | 2d | 2024-10-19 | 2024-10-20 | 18 | 608d | 0d |  |  |
| 20 | 1.4.1.5 | Presentación de Propuesta de Plan de Trabajo y Revisión de Información Preliminar |  | 30d | 2024-10-21 | 2024-11-19 | 19 | 608d | 0d |  |  |
| 21 | 1.4.1.6 | Respuesta a Solicitud de Requerimiento de Información |  | 42d | 2024-11-20 | 2024-12-31 | 20 | 608d | 0d |  |  |
| 22 | 1.4.1.7 | **Monitoreo Ambiental** |  | 57d | 2024-11-23 | 2025-01-18 |  | 637d |  |  |  |
| 23 | 1.4.1.7.1 | TdR Requerimiento Monitoreo Ambiental |  | 1d | 2024-11-23 | 2024-11-23 | 20FS+3d | 639d | 0d |  |  |
| 24 | 1.4.1.7.2 | Solped y OC |  | 2d | 2024-12-09 | 2024-12-10 | 23FS+15d | 639d | 0d |  |  |
| 25 | 1.4.1.7.3 | Licitación |  | 1d | 2024-12-11 | 2024-12-11 | 24 | 639d | 0d |  |  |
| 26 | 1.4.1.7.4 | Contratación del Proveedor |  | 1d | 2024-12-14 | 2024-12-14 | 25FS+2d | 639d | 0d |  |  |
| 27 | 1.4.1.7.5 | Ejecución del Monitoreo y Resultados |  | 6d | 2025-01-13 | 2025-01-18 | 26FS+29d | 639d |  |  |  |
| 28 | 1.4.1.8 | Elaboración del Estudio |  | 49d | 2025-01-01 | 2025-02-18 | 21 | 608d | 0d |  |  |
| 29 | 1.4.1.9 | Carta Solicitud de Exposición GORE Piura |  | 1d | 2025-02-13 | 2025-02-13 | 28FS-6d | 609d | 0d |  |  |
| 30 | 1.4.1.10 | Exposición GORE Piura |  | 1d | 2025-02-17 | 2025-02-17 | 29FS+3d | 609d |  |  |  |
| 31 | 1.4.1.11 | Ingreso del Expediente de la MDIA |  | 1d | 2025-03-19 | 2025-03-19 |  | 517d | 0d | start no earlier than 2025-03-19 |  |
| 32 | 1.4.1.12 | Evaluación y Aprobación del Estudio y Resolución (DREM) |  | 62d | 2025-03-20 | 2025-05-20 | 31 | 517d |  |  |  |

Notes:
- 7: Se necesita la firma del Convenio para empezar las obras en subestación

| ID | WBS | Task | Duration | Start | Finish | Predecessors | Total slack | Free slack | Constraint | Responsable |
| --- | --- | --- | --- | --- | --- | --- | --- | --- | --- | --- |
| 33 | 1.4.2 | **Permisos Municipales** | 150d | 2024-10-01 | 2025-02-27 |  | 597d |  |  | Lizet Vite |
| 34 | 1.4.2.1 | **Municipalidad de Sullana** | 150d | 2024-10-01 | 2025-02-27 |  | 597d |  |  |  |
| 35 | 1.4.2.1.1 | Certificado de Zonificación y Vías | 150d | 2024-10-01 | 2025-02-27 |  | 594d |  |  |  |
| 36 | 1.4.2.1.2 | Habilitaciones Urbanas y Secciones Viales | 98d | 2024-10-01 | 2025-01-06 |  | 646d |  |  |  |
| 37 | 1.4.2.2 | **Municipalidad de Paita** | 150d | 2024-10-01 | 2025-02-27 |  | 597d |  |  |  |
| 38 | 1.4.2.2.1 | Certificado de Zonificación y Vías | 150d | 2024-10-01 | 2025-02-27 |  | 594d |  |  |  |
| 39 | 1.4.2.2.2 | Habilitaciones Urbanas y Secciones Viales | 98d | 2024-10-01 | 2025-01-06 |  | 646d |  |  |  |
| 40 | 1.4.2.3 | **Municipalidad de Miguel Checa** | 98d | 2024-10-01 | 2025-01-06 |  | 649d |  |  |  |
| 41 | 1.4.2.3.1 | Habilitaciones Urbanas y Secciones Viales | 98d | 2024-10-01 | 2025-01-06 |  | 646d |  |  |  |
| 42 | 1.4.2.4 | **Municipalidad de La Huaca** | 60d | 2024-10-01 | 2024-11-29 |  | 687d |  |  |  |
| 43 | 1.4.2.4.1 | Habilitaciones Urbanas y Secciones Viales | 60d | 2024-10-01 | 2024-11-29 |  | 684d |  |  |  |
| 44 | 1.4.3 | **CIRA** | 107d | 2025-10-20 | 2026-02-03 |  | 226d |  |  | Lizet Vite |
| 45 | 1.4.3.1 | Licitación | 42d | 2025-10-20 | 2025-11-30 |  | 228d | 0d | start no earlier than 2025-10-20 |  |
| 46 | 1.4.3.2 | Contratación de Proveedor | 1d | 2025-12-01 | 2025-12-01 | 45 | 228d | 0d | start no earlier than 2025-12-01 |  |
| 47 | 1.4.3.3 | Elaboración de Expediente (Visita y Elaboración) | 4d | 2025-12-02 | 2025-12-05 | 46 | 228d | 0d |  |  |
| 48 | 1.4.3.4 | Evaluación y Aprobación (SAP 20 días hab) | 60d | 2025-12-06 | 2026-02-03 | 47 | 228d | 148d |  |  |
| 49 | 1.4.4 | **PMAR** | 141d | 2026-05-30 | 2026-10-17 |  | 0d |  |  | Lizet Vite |
| 50 | 1.4.4.1 | Licitación | 15d | 2026-05-30 | 2026-06-13 | 118SS-45d | 95d | 0d |  |  |
| 51 | 1.4.4.2 | Contratación de Proveedor | 1d | 2026-06-14 | 2026-06-14 | 50 | 95d | 0d |  |  |
| 52 | 1.4.4.3 | Elaboración de Expediente | 15d | 2026-06-15 | 2026-06-29 | 48, 51 | 95d | 0d |  |  |
| 53 | 1.4.4.4 | Aprobación de PMAR | 15d | 2026-06-30 | 2026-07-14 | 52 | 95d |  |  |  |
| 54 | 1.4.4.5 | Ejecución de PMAR | 96d | 2026-07-14 | 2026-10-17 | 116SS | 0d |  |  |  |
| 55 | 1.4.5 | **Terreno y Servidumbre de Paso** | 192d | 2025-10-15 | 2026-04-24 |  | 176d |  |  | Lizet Vite |
| 56 | 1.4.5.1 | Estudio de Títulos | 15d | 2025-10-15 | 2025-10-29 |  | 180d | 7d | start no earlier than 2025-10-15 |  |
| 57 | 1.4.5.2 | Búsqueda Catastral | 15d | 2025-10-15 | 2025-10-29 |  | 180d | 7d | start no earlier than 2025-10-15 |  |

Notes:
- 49: Lo necesitamos aprobado antes de empezar Obras / Notificación a DDC por SAP (20d hab)
- 52: Se elabora con la Resolución del CIRA Aprobado
- 54: Sucede en Paralelo a las excavaciones (Coincidir fechas)

| ID | WBS | Task | Type | Duration | Start | Finish | Predecessors | Total slack | Free slack | Constraint | Responsable |
| --- | --- | --- | --- | --- | --- | --- | --- | --- | --- | --- | --- |
| 58 | 1.4.5.3 | **Servidumbre de Electroducto y Tránsito** |  | 170d | 2025-11-06 | 2026-04-24 |  | 176d |  |  |  |
| 59 | 1.4.5.3.1 | **Solicitud - PECHP** |  | 170d | 2025-11-06 | 2026-04-24 |  | 176d |  |  |  |
| 60 | 1.4.5.3.1.1 | Elaboración de planos perimétricos, ubicación y memoria descriptiva |  | 3d | 2025-11-06 | 2025-11-08 | 56, 57 | 173d | 0d | start no earlier than 2025-11-06 |  |
| 61 | 1.4.5.3.1.2 | Proceso de Evaluación |  | 157d | 2025-11-09 | 2026-04-14 | 60 | 173d | 0d |  |  |
| 62 | 1.4.5.3.1.3 | Levantamiento de Observaciones |  | 5d | 2026-04-15 | 2026-04-19 | 61 | 173d | 0d |  |  |
| 63 | 1.4.5.3.1.4 | Suscripción del Convenio o Resolución |  | 5d | 2026-04-20 | 2026-04-24 | 62 | 173d | 0d |  |  |
| 64 | 1.4.5.4 | Servidumbres Suscritas | milestone | 0d | 2026-04-24 | 2026-04-24 | 63 | 173d |  |  |  |
| 65 | 1.5 | **PROSPECCIÓN COMERCIAL Y CIERRE DE CONTRATOS** |  | 546d | 2025-01-01 | 2026-06-30 |  | 109d |  |  |  |
| 66 | 1.5.1 | Mapeo de demanda |  | 90d | 2025-01-01 | 2025-03-31 |  | 443d | 0d | start no earlier than 2025-01-01 | Stefano Roncal |
| 67 | 1.5.2 | **Cierre de Contratos Comerciales** |  | 456d | 2025-04-01 | 2026-06-30 |  | 109d |  |  | Stefano Roncal |
| 68 | 1.5.2.1 | Solicitud de Cartas de Factibilidad |  | 15d | 2025-04-01 | 2025-04-15 | 66 | 456d | 0d |  |  |
| 69 | 1.5.2.2 | Solicitud de Punto de Diseño |  | 107d | 2025-04-16 | 2025-07-31 | 68 | 456d |  |  |  |
| 70 | 1.5.2.3 | Elaboración de Contratos |  | 8d | 2025-06-23 | 2025-06-30 |  | 122d | 0d | start no earlier than 2025-06-23 |  |
| 71 | 1.5.2.4 | Firma de contrato de suministro |  | 365d | 2025-07-01 | 2026-06-30 | 70 | 122d |  |  |  |
| 72 | 1.6 | **PROCURA DE MATERIALES CVC** |  | 372d | 2025-08-08 | 2026-08-14 |  | 64d |  |  |  |
| 73 | 1.6.1 | **Materiales SET VdC** |  | 372d | 2025-08-08 | 2026-08-14 |  | 64d |  |  | Joisy Romero |
| 74 | 1.6.1.1 | **Celda** |  | 309d | 2025-08-08 | 2026-06-12 |  | 127d |  |  |  |
| 75 | 1.6.1.1.1 | **Evaluación de Proveedores (Logística)** |  | 10d | 2025-08-08 | 2025-08-17 |  | 426d |  |  |  |
| 76 | 1.6.1.1.1.1 | TdT |  | 2d | 2025-08-08 | 2025-08-09 |  | 423d | 0d | start no earlier than 2025-08-08 |  |
| 77 | 1.6.1.1.1.2 | Revisión de proveedores |  | 5d | 2025-08-10 | 2025-08-14 | 76 | 423d | 0d |  |  |
| 78 | 1.6.1.1.1.3 | Selección del Proveedor |  | 3d | 2025-08-15 | 2025-08-17 | 77 | 423d |  |  |  |
| 79 | 1.6.1.1.2 | Generación de Orden de Compra de Materiales |  | 1d | 2025-09-10 | 2025-09-10 |  | 340d | 0d | start no earlier than 2025-09-10 |  |
| 80 | 1.6.1.1.3 | Aprobación de Planos Mecánicos (Ingeniería) |  | 64d | 2025-09-11 | 2025-11-13 | 79 | 340d |  |  |  |
| 81 | 1.6.1.1.4 | **Fabricación de materiales** |  | 152d | 2025-11-14 | 2026-04-14 |  | 127d |  |  |  |
| 82 | 1.6.1.1.4.1 | Celda de media tensión |  | 152d | 2025-11-14 | 2026-04-14 |  | 129d | 0d | start no earlier than 2025-11-14 |  |

Notes:
- 82: Cuadrar con la generación de orden de Compra y Aprobación de Ingeniería

| ID | WBS | Task | Type | Duration | Start | Finish | Predecessors | Total slack | Free slack | Constraint | Responsable |
| --- | --- | --- | --- | --- | --- | --- | --- | --- | --- | --- | --- |
| 83 | 1.6.1.1.5 | **Recepción de materiales** |  | 59d | 2026-04-15 | 2026-06-12 |  | 127d |  |  |  |
| 84 | 1.6.1.1.5.1 | Celda de media tensión |  | 59d | 2026-04-15 | 2026-06-12 | 82 | 129d |  |  |  |
| 85 | 1.6.1.2 | **Obras Civiles (Opcional)** |  | 32d | 2026-07-14 | 2026-08-14 |  | -128d | 0d |  |  |
| 86 | 1.6.1.2.1 | **Evaluación de Proveedores (Logística)** |  | 15d | 2026-07-14 | 2026-07-28 |  | -128d | 0d | start no earlier than 2025-12-15 |  |
| 87 | 1.6.1.2.1.1 | TdR |  | 5d | 2026-07-14 | 2026-07-18 | 97 | -128d | 0d | start no earlier than 2025-11-11 |  |
| 88 | 1.6.1.2.1.2 | Revisión de proveedores |  | 5d | 2026-07-19 | 2026-07-23 | 87 | -128d | 0d |  |  |
| 89 | 1.6.1.2.1.3 | Selección del Proveedor |  | 5d | 2026-07-24 | 2026-07-28 | 88 | -128d | 0d |  |  |
| 90 | 1.6.1.2.2 | **Generación de Orden de Compra de Materiales** |  | 7d | 2026-07-29 | 2026-08-04 |  | -128d | 0d |  |  |
| 91 | 1.6.1.2.2.1 | Cableado y accesorios |  | 7d | 2026-07-29 | 2026-08-04 | 89 | -126d | 0d |  |  |
| 92 | 1.6.1.2.2.2 | Material para obras civiles |  | 7d | 2026-07-29 | 2026-08-04 | 89 | -128d | 0d |  |  |
| 93 | 1.6.1.2.3 | **Recepción de materiales** |  | 10d | 2026-08-05 | 2026-08-14 |  | -128d | 0d |  |  |
| 94 | 1.6.1.2.3.1 | Cableado y accesorios |  | 8d | 2026-08-05 | 2026-08-12 | 91 | -126d | 0d |  |  |
| 95 | 1.6.1.2.3.2 | Material para obras civiles |  | 10d | 2026-08-05 | 2026-08-14 | 92 | -128d | 0d |  |  |
| 96 | 1.7 | **PROCURA DEL CONTRATISTA** |  | 33d | 2026-06-11 | 2026-07-13 |  | -128d | 0d |  |  |
| 97 | 1.7.1 | **Licitación de contratista de Obras Civiles (SET VdChr)** |  | 33d | 2026-06-11 | 2026-07-13 |  | -128d | 0d |  | Santiago León |
| 98 | 1.7.1.1 | Tdr |  | 4d | 2026-06-11 | 2026-06-14 | 115 | -127d | 0d |  |  |
| 99 | 1.7.1.2 | Presentación de propuestas |  | 10d | 2026-06-15 | 2026-06-24 | 98 | -127d | 0d |  |  |
| 100 | 1.7.1.3 | Levantamiento de observaciones |  | 4d | 2026-06-25 | 2026-06-28 | 99 | -127d | 0d |  |  |
| 101 | 1.7.1.4 | Contrata de Proveedor |  | 6d | 2026-06-29 | 2026-07-04 | 100 | -127d | 0d |  |  |
| 102 | 1.7.1.5 | Generación de Contrato |  | 6d | 2026-07-05 | 2026-07-10 | 101 | -127d | 0d |  |  |
| 103 | 1.7.1.6 | Firma de partes |  | 3d | 2026-07-11 | 2026-07-13 | 102 | -127d | 0d |  |  |
| 104 | 1.8 | **MONTAJE** |  | 318d | 2025-11-03 | 2026-09-16 |  | -102d | 0d |  |  |
| 105 | 1.8.1 | **Estudios Previos a Obra** |  | 1d | 2026-05-17 | 2026-05-17 |  | 0d |  |  | Santiago León |
| 106 | 1.8.1.1 | Visita en campo a SET VdChr | manual | 1d | 2026-05-17 | 2026-05-17 |  |  |  |  |  |

Notes:
- 86: La evaluación y elección de proveedor de materiales demora aproximadamente 15 días
- 93: Considerar 10 días para la recepción de materiales
- 97: La licitación de contratista suele demorar al rededor de un mes

| ID | WBS | Task | Type | Duration | Start | Finish | Predecessors | Total slack | Free slack | Constraint | Deadline | Responsable |
| --- | --- | --- | --- | --- | --- | --- | --- | --- | --- | --- | --- | --- |
| 107 | 1.8.2 | **Elaboración de Expediente Técnico** |  | 220d | 2025-11-03 | 2026-06-10 |  | -128d | 0d |  |  | Santiago León |
| 108 | 1.8.2.1 | Inicio de Expediente Técnico |  | 26d | 2025-11-03 | 2025-11-28 |  | 0d |  | must start on 2025-11-03 |  |  |
| 109 | 1.8.2.2 | Envío de Expediente técnico |  | 116d | 2025-11-29 | 2026-03-24 | 108 | -127d | 0d |  |  |  |
| 110 | 1.8.2.3 | Revisión inicial de expediente técnico (Ingeniería) |  | 6d | 2026-03-25 | 2026-03-30 | 109 | -127d | 0d |  |  |  |
| 111 | 1.8.2.4 | 1er Levantamiento de observaciones |  | 17d | 2026-03-31 | 2026-04-16 | 110 | -127d | 0d |  |  |  |
| 112 | 1.8.2.5 | Revisión y aprobación (Operaciones) |  | 12d | 2026-04-17 | 2026-04-28 | 111 | -127d | 0d |  |  |  |
| 113 | 1.8.2.6 | 2do Levantamiento de observaciones - Rediseño en SE VdCh |  | 27d | 2026-04-29 | 2026-05-25 | 112 | -127d | 0d |  |  |  |
| 114 | 1.8.2.7 | Revisión previa (Ingeniería & Proy) |  | 16d | 2026-05-26 | 2026-06-10 | 113 | -127d | 0d |  |  |  |
| 115 | 1.8.2.8 | Expediente Técnico Aprobado Celeo/CVC | milestone | 0d | 2026-06-10 | 2026-06-10 | 114 | -127d | 0d |  |  |  |
| 116 | 1.8.3 | **Punto de conexión - SET Valle del Chira (Celeo)** |  | 65d | 2026-07-14 | 2026-09-16 |  | -96d | 0d |  |  | Santiago León |
| 117 | 1.8.3.1 | **Obras preliminares civiles** |  | 21d | 2026-07-14 | 2026-08-03 |  | 16d |  |  |  |  |
| 118 | 1.8.3.1.1 | Movilización |  | 8d | 2026-07-14 | 2026-07-21 | 97 | 55d | 0d |  |  |  |
| 119 | 1.8.3.1.2 | Trazo y Replanteo |  | 6d | 2026-07-22 | 2026-07-27 | 118 | 55d | 0d |  |  |  |
| 120 | 1.8.3.1.3 | Elaboración de Ingeniería de detalle |  | 7d | 2026-07-28 | 2026-08-03 | 119 | 75d | 0d |  |  |  |
| 121 | 1.8.3.1.4 | Aprobación (hito) | milestone, manual | 0d | 2026-07-30 | 2026-07-30 | 120 |  |  |  |  |  |
| 122 | 1.8.3.2 | **Obras civiles** |  | 24d | 2026-07-31 | 2026-08-23 |  | 55d |  |  |  |  |
| 123 | 1.8.3.2.1 | Excavaciones |  | 16d | 2026-07-31 | 2026-08-15 | 119FS+3d | 55d | 0d |  |  |  |
| 124 | 1.8.3.2.2 | Armado de buzones |  | 5d | 2026-08-16 | 2026-08-20 | 123 | 55d | 0d |  |  |  |
| 125 | 1.8.3.2.3 | Encofrado |  | 3d | 2026-08-21 | 2026-08-23 | 124 | 55d |  |  |  |  |
| 126 | 1.8.3.3 | **Obras electromecánicas** |  | 19d | 2026-08-15 | 2026-09-02 |  | -128d | 0d |  |  |  |
| 127 | 1.8.3.3.1 | Tendido de cable subterráneo N2SY 18/30kV 1x240mm2 |  | 14d | 2026-08-15 | 2026-08-28 | 93 | -128d | 0d |  |  |  |
| 128 | 1.8.3.3.2 | Instalación de celda de media tensión |  | 5d | 2026-08-29 | 2026-09-02 | 127 | -128d | 0d |  | 2026-04-27 |  |
| 129 | 1.8.3.4 | Pruebas y puesta en operación |  | 14d | 2026-09-03 | 2026-09-16 | 126 | 31d | 0d |  |  |  |
| 130 | 1.9 | POC | milestone | 0d | 2026-09-16 | 2026-09-16 | 129 | 31d |  |  |  |  |

Notes:
- 107: Desde la elaboración hasta la aprobación demora aproximadamente 1 mes / Debería empezar en Enero, de preferencia / Revisar procedimiento 018
- 109: Para esta actividad si es necesario tener listos los estudios de resistividad y de suelos
- 118: Tarea variable / Podría demorar más de 3 días depende de el terreno y la lejanía para el transporte / Consultar a Ingeniería (Diego)
- 127: Se puede avanzar las obras civiles antes de que llegue la celda y la instalación de la celda y tendido lo podemos ya ver con el contratista de montaje electromecanico
- 128: 26 de Junio llega a puerto de Paita - 7 días de desaduanaje
